# Zeus UAV platform

Schedule from MS Project, 2017-02-06 to 2017-06-20, status date 2017-02-07, 3 hours a day, A marks actual dates.
HP

## Calendars

- Estándar: Mon-Fri 10:00-13:00; Sat-Sun off.

## Schedule

| ID | WBS | Task | Duration | Start | Finish | Predecessors | Complete | Remaining | Total slack | Free slack |
| --- | --- | --- | --- | --- | --- | --- | --- | --- | --- | --- |
| 1 | 1 | **PRELIMINARY REVIEW** | 5.67d | 2017-02-07 | 2017-02-14 |  |  |  | 3d | 0d |
| 2 | 1.1 | Earth-Ionosphere | 9h | 2017-02-07 | 2017-02-09 |  |  |  | 3d | 0d |
| 3 | 1.2 | Previous research | 8h | 2017-02-10 | 2017-02-14 | 2 |  |  | 3d |  |
| 4 | 2 | **PLANE DEVELOPMENT** | 58.33d | 2017-02-14 A | 2017-05-05 | 1 | 12% | 51.22d | 6d | 0d |
| 5 | 2.1 | **Conceptual design** | 3.33d | 2017-02-14 | 2017-02-17 |  |  |  | 61d |  |
| 6 | 2.1.1 | Flight conditions | 6h | 2017-02-14 | 2017-02-16 |  |  |  | 61d | 0d |
| 7 | 2.1.2 | Functional specifications | 4h | 2017-02-16 | 2017-02-17 | 6 |  |  | 61d |  |
| 8 | 2.2 | **Hardware** | 21.67d | 2017-02-17 A | 2017-03-21 |  | 40% | 13d | 6d |  |
| 9 | 2.2.1 | Components | 10h | 2017-02-17 A | 2017-02-22 A | 5 | 100% |  |  |  |
| 10 | 2.2.2 | Assembly | 15h | 2017-03-14 | 2017-03-21 | 23, 36 |  |  | 6d | 0d |
| 11 | 2.3 | **Software** | 5d | 2017-04-04 | 2017-04-11 | 28 |  |  | 6d | 0d |
| 12 | 2.3.1 | Configuration | 5h | 2017-04-04 | 2017-04-05 | 10 |  |  | 6d | 0d |
| 13 | 2.3.2 | Automatization | 10h | 2017-04-04 | 2017-04-07 | 12SS |  |  | 6d | 0d |
| 14 | 2.3.3 | Custom modes | 5h | 2017-04-07 | 2017-04-11 | 13 |  |  | 6d |  |
| 15 | 2.4 | **Launching platform** | 4.33d | 2017-04-25 | 2017-05-01 | 27 |  |  | 6d | 0d |
| 16 | 2.4.1 | Design | 6h | 2017-04-25 | 2017-04-26 |  |  |  | 6d | 0d |
| 17 | 2.4.2 | Components | 3h | 2017-04-27 | 2017-04-27 | 16 |  |  | 6d | 0d |
| 18 | 2.4.3 | Assembly | 4h | 2017-04-28 | 2017-05-01 | 17 |  |  | 6d |  |
| 19 | 2.5 | **Testing** | 4.67d | 2017-05-01 | 2017-05-05 | 8, 11, 15 |  |  | 6d |  |
| 20 | 2.5.1 | Subsystems test | 4h | 2017-05-01 | 2017-05-02 |  |  |  | 6d | 0d |
| 21 | 2.5.2 | Preliminary flights | 10h | 2017-05-02 | 2017-05-05 | 20 |  |  | 6d |  |
| 22 | 3 | **PAYLOAD** | 43d | 2017-02-23 A | 2017-04-24 | 1 | 10% | 38.66d | 6d |  |
| 23 | 3.1 | **Field Mill** | 13.33d | 2017-02-23 A | 2017-03-14 | 9 | 25% | 10d | 6d | 0d |
| 24 | 3.1.1 | Data logger | 20h | 2017-02-23 A | 2017-03-03 |  | 50% | 10h | 6d | 0d |
| 25 | 3.1.2 | Integration | 15h | 2017-03-03 | 2017-03-10 | 24 |  |  | 6d | 0d |
| 26 | 3.1.3 | Test | 5h | 2017-03-10 | 2017-03-14 | 25 |  |  | 6d |  |

| ID | WBS | Task | Type | Duration | Start | Finish | Predecessors | Complete | Total slack | Free slack | Constraint |
| --- | --- | --- | --- | --- | --- | --- | --- | --- | --- | --- | --- |
| 27 | 3.2 | **Wire Launcher** |  | 24.67d | 2017-03-21 | 2017-04-24 | 23 |  | 6d | 0d |  |
| 28 | 3.2.1 | Design |  | 30h | 2017-03-21 | 2017-04-04 | 10 |  | 6d | 0d | start no earlier than 2017-02-21 |
| 29 | 3.2.2 | Construction |  | 20h | 2017-04-11 | 2017-04-19 | 10, 28, 11 |  | 6d | 0d |  |
| 30 | 3.2.3 | Test |  | 9h | 2017-04-20 | 2017-04-24 | 29 |  | 6d |  |  |
| 31 | 4 | **TESTING** |  | 25d | 2017-05-08 | 2017-06-09 | 4, 22 |  | 6d |  |  |
| 32 | 4.1 | Sensing flights |  | 15h | 2017-05-08 | 2017-05-12 |  |  | 6d | 0d |  |
| 33 | 4.2 | Experimental flights |  | 10h | 2017-05-15 | 2017-05-18 | 32 |  | 6d | 0d |  |
| 34 | 4.3 | Optimization |  | 50h | 2017-05-18 | 2017-06-09 | 33 |  | 6d |  |  |
| 35 | 5 | START | milestone | 0h | 2017-02-06 A | 2017-02-06 A |  | 100% |  |  | start no earlier than 2017-02-06 |
| 36 | 6 | Components arrival | milestone | 0h | 2017-02-28 | 2017-02-28 |  |  | 16.33d | 10.33d | start no earlier than 2017-02-28 |
| 37 | 7 | END | milestone | 0h | 2017-06-20 | 2017-06-20 |  |  | 0d |  | start no earlier than 2017-06-20 |
